# Project_plan

Schedule from MS Project, 2011-12-19 to 2012-08-28.
org

## Calendars

- Standard: Mon-Fri 08:00-12:00, 13:00-17:00; Sat-Sun off.

## Schedule

| ID | WBS | Task | Duration | Start | Finish | Predecessors | Total slack |
| --- | --- | --- | --- | --- | --- | --- | --- |
| 1 | 1 | **Система за управление на фирмен сервиз за превозни средства** | 182d | 2011-12-19 | 2012-08-28 |  | 0d |
| 2 | 1.1 | **I** | 20d | 2011-12-19 | 2012-01-13 |  | 0d |
| 3 | 1.1.1 | Съставяне на проектен план | 10d | 2011-12-19 | 2011-12-30 |  | 0d |
| 4 | 1.1.2 | Определяне на потребителските изисквания | 5d | 2011-12-19 | 2011-12-23 |  | 5d |
| 5 | 1.1.3 | Определяне на ролите в екипа | 1d | 2011-12-19 | 2011-12-19 |  | 9d |
| 6 | 1.1.4 | Преглед на съществуващата инфраструктура | 5d | 2011-12-19 | 2011-12-23 |  | 5d |
| 7 | 1.1.5 | Изготвяне на план за управлението на качеството | 5d | 2011-12-19 | 2011-12-23 |  | 15d |
| 8 | 1.1.6 | **Уточняване на нещата необходими за следващите фази** | 3d | 2011-12-19 | 2011-12-21 |  | 17d |
| 9 | 1.1.6.1 | Уточняване на средата за проектиране | 3d | 2011-12-19 | 2011-12-21 |  | 17d |
| 10 | 1.1.6.2 | Уточняване на средата за разработка | 3d | 2011-12-19 | 2011-12-21 |  | 17d |
| 11 | 1.1.6.3 | Уточняване на системата за контрол на версиите (Version Control) | 3d | 2011-12-19 | 2011-12-21 |  | 17d |
| 12 | 1.1.6.4 | Уточняване на системата за контрол на задачите (Issue Tracker) | 3d | 2011-12-19 | 2011-12-21 |  | 17d |
| 13 | 1.1.6.5 | Уточняване на използвания Application / Web сървър | 3d | 2011-12-19 | 2011-12-21 |  | 17d |
| 14 | 1.1.6.6 | Уточняване на използваната система за управление на бази от данни | 3d | 2011-12-19 | 2011-12-21 |  | 17d |
| 15 | 1.1.7 | Изготвяне на визията на проекта | 10d | 2012-01-02 | 2012-01-13 | 3, 4, 5, 6 | 0d |
| 16 | 1.2 | **E** | 162d | 2012-01-16 | 2012-08-28 | 2 | 0d |
| 17 | 1.2.1 | **E1 - Начален анализ и дизайн** | 30d | 2012-01-16 | 2012-02-24 |  | 0d |
| 18 | 1.2.1.1 | Разработване на бизнес модел (BPMs) | 20d | 2012-01-16 | 2012-02-10 |  | 0d |
| 19 | 1.2.1.2 | Разработване на модел на данните (Data Model) | 10d | 2012-01-16 | 2012-01-27 |  | 20d |
| 20 | 1.2.1.3 | Разработване на случаите на употреба (Use-case) | 10d | 2012-02-13 | 2012-02-24 | 18 | 0d |
| 21 | 1.2.2 | **E2 - Модул Електронно регистриране** | 110d | 2012-02-27 | 2012-07-27 | 17 | 0d |
| 22 | 1.2.2.1 | Разработване на клас и обект диаграми (Class and Object Diagrams) | 22d | 2012-02-27 | 2012-03-27 |  | 0d |
| 23 | 1.2.2.2 | Разработване на потребителски случаи (Use Cases) | 22d | 2012-03-28 | 2012-04-26 | 22 | 0d |
| 24 | 1.2.2.3 | Разработване на диаграми на последователностите (Sequence Diagrams) | 22d | 2012-04-27 | 2012-05-28 | 23 | 0d |
| 25 | 1.2.2.4 | Разработване на диаграми на състоянията (State Diagrams) | 22d | 2012-05-29 | 2012-06-27 | 24 | 0d |
| 26 | 1.2.2.5 | Разработване на тестови случаи | 22d | 2012-06-28 | 2012-07-27 | 25 | 0d |

| ID | WBS | Task | Duration | Start | Finish | Predecessors | Total slack |
| --- | --- | --- | --- | --- | --- | --- | --- |
| 27 | 1.2.3 | **E3 - Модул Склад** | 110d | 2012-02-27 | 2012-07-27 | 17 | 0d |
| 28 | 1.2.3.1 | Разработване на клас и обект диаграми (Class and Object Diagrams) | 22d | 2012-02-27 | 2012-03-27 |  | 0d |
| 29 | 1.2.3.2 | Разработване на потребителски случаи (Use Cases) | 22d | 2012-03-28 | 2012-04-26 | 28 | 0d |
| 30 | 1.2.3.3 | Разработване на диаграми на последователностите (Sequence Diagrams) | 22d | 2012-04-27 | 2012-05-28 | 29 | 0d |
| 31 | 1.2.3.4 | Разработване на диаграми на състоянията (State Diagrams) | 22d | 2012-05-29 | 2012-06-27 | 30 | 0d |
| 32 | 1.2.3.5 | Разработване на тестови случаи | 22d | 2012-06-28 | 2012-07-27 | 31 | 0d |
| 33 | 1.2.4 | **E4 - Модул Примане на автомобили** | 110d | 2012-02-27 | 2012-07-27 | 17 | 0d |
| 34 | 1.2.4.1 | Разработване на клас и обект диаграми (Class and Object Diagrams) | 22d | 2012-02-27 | 2012-03-27 |  | 0d |
| 35 | 1.2.4.2 | Разработване на потребителски случаи (Use Cases) | 22d | 2012-03-28 | 2012-04-26 | 34 | 0d |
| 36 | 1.2.4.3 | Разработване на диаграми на последователностите (Sequence Diagrams) | 22d | 2012-04-27 | 2012-05-28 | 35 | 0d |
| 37 | 1.2.4.4 | Разработване на диаграми на състоянията (State Diagrams) | 22d | 2012-05-29 | 2012-06-27 | 36 | 0d |
| 38 | 1.2.4.5 | Разработване на тестови случаи | 22d | 2012-06-28 | 2012-07-27 | 37 | 0d |
| 39 | 1.2.5 | **E5 - Модул Гаранционни автомобили** | 110d | 2012-02-27 | 2012-07-27 | 17 | 0d |
| 40 | 1.2.5.1 | Разработване на клас и обект диаграми (Class and Object Diagrams) | 22d | 2012-02-27 | 2012-03-27 |  | 0d |
| 41 | 1.2.5.2 | Разработване на потребителски случаи (Use Cases) | 22d | 2012-03-28 | 2012-04-26 | 40 | 0d |
| 42 | 1.2.5.3 | Разработване на диаграми на последователностите (Sequence Diagrams) | 22d | 2012-04-27 | 2012-05-28 | 41 | 0d |
| 43 | 1.2.5.4 | Разработване на диаграми на състоянията (State Diagrams) | 22d | 2012-05-29 | 2012-06-27 | 42 | 0d |
| 44 | 1.2.5.5 | Разработване на тестови случаи | 22d | 2012-06-28 | 2012-07-27 | 43 | 0d |
| 45 | 1.2.6 | **E6 - Модул Счетоводство** | 110d | 2012-02-27 | 2012-07-27 | 17 | 0d |
| 46 | 1.2.6.1 | Разработване на клас и обект диаграми (Class and Object Diagrams) | 22d | 2012-02-27 | 2012-03-27 |  | 0d |
| 47 | 1.2.6.2 | Разработване на потребителски случаи (Use Cases) | 22d | 2012-03-28 | 2012-04-26 | 46 | 0d |
| 48 | 1.2.6.3 | Разработване на диаграми на последователностите (Sequence Diagrams) | 22d | 2012-04-27 | 2012-05-28 | 47 | 0d |
| 49 | 1.2.6.4 | Разработване на диаграми на състоянията (State Diagrams) | 22d | 2012-05-29 | 2012-06-27 | 48 | 0d |
| 50 | 1.2.6.5 | Разработване на тестови случаи | 22d | 2012-06-28 | 2012-07-27 | 49 | 0d |
| 51 | 1.2.7 | Финална работа по документацията на проектна фаза E | 22d | 2012-07-30 | 2012-08-28 | 45, 39, 33, 27, 21 | 0d |
